# ACC 2015

Schedule from MS Project, 2015-11-26 to 2015-12-07, status date 2015-05-08, A marks actual dates.

## Calendars

- Standard: Mon-Fri 08:00-12:00, 13:00-17:00; Sat-Sun off.

## Resources

| Resource |
| --- |
| Chiến Thắng |
| Lệ Huyền |

## Schedule

| ID | WBS | Task | Duration | Start | Finish | Predecessors | Complete | Remaining | Total slack | Resources | Work | Actual work |
| --- | --- | --- | --- | --- | --- | --- | --- | --- | --- | --- | --- | --- |
| 1 | 1 | **Update report layout** | 7.88d | 2015-11-26 08:00 A | 2015-12-07 16:00 |  | 83% | 1.3d | 0d |  | 103h | 86h |
| 2 | 1.1 | **Quản lý tiền** | 1.25d | 2015-11-26 08:00 A | 2015-11-27 10:00 A |  | 100% |  |  |  | 10h | 10h |
| 3 | 1.1.1 | Nghiệp vụ | 6h | 2015-11-26 08:00 A | 2015-11-26 15:00 A |  | 100% |  |  | Lệ Huyền | 6h | 6h |
| 4 | 1.1.2 | Báo cáo | 4h | 2015-11-26 15:00 A | 2015-11-27 10:00 A | 3 | 100% |  |  | Lệ Huyền | 4h | 4h |
| 5 | 1.2 | **Mua hàng** | 1.5d | 2015-11-27 10:00 A | 2015-11-30 15:00 A |  | 100% |  |  |  | 12h | 12h |
| 6 | 1.2.1 | Nghiệp vụ | 4h | 2015-11-27 10:00 A | 2015-11-27 15:00 A | 4 | 100% |  |  | Lệ Huyền | 4h | 4h |
| 7 | 1.2.2 | Báo cáo | 8h | 2015-11-27 15:00 A | 2015-11-30 15:00 A | 6 | 100% |  |  | Lệ Huyền | 8h | 8h |
| 8 | 1.3 | **Công nợ phải trả** | 1.38d | 2015-11-30 15:00 A | 2015-12-02 09:00 A |  | 100% |  |  |  | 11h | 11h |
| 9 | 1.3.1 | Nghiệp vụ | 5h | 2015-11-30 15:00 A | 2015-12-01 11:00 A | 7 | 100% |  |  | Lệ Huyền | 5h | 5h |
| 10 | 1.3.2 | Báo cáo | 6h | 2015-12-01 11:00 A | 2015-12-02 09:00 A | 9 | 100% |  |  | Lệ Huyền | 6h | 6h |
| 11 | 1.4 | **Bán hàng** | 1.62d | 2015-12-02 09:00 A | 2015-12-03 15:00 A |  | 100% |  |  |  | 13h | 13h |
| 12 | 1.4.1 | Nghiệp vụ | 4h | 2015-12-02 09:00 A | 2015-12-02 14:00 A | 10 | 100% |  |  | Lệ Huyền | 4h | 4h |
| 13 | 1.4.2 | Báo cáo | 9h | 2015-12-02 14:00 A | 2015-12-03 15:00 A | 12 | 100% |  |  | Lệ Huyền | 9h | 9h |
| 14 | 1.5 | **Công nợ phải thu** | 1.62d | 2015-12-03 15:00 | 2015-12-07 11:00 |  |  |  | 0d |  | 13h |  |
| 15 | 1.5.1 | Nghiệp vụ | 6h | 2015-12-03 15:00 | 2015-12-04 12:00 | 13 |  |  | 0d | Lệ Huyền | 6h |  |
| 16 | 1.5.2 | Báo cáo | 7h | 2015-12-04 13:00 | 2015-12-07 11:00 | 15 |  |  | 0d | Lệ Huyền | 7h |  |
| 17 | 1.6 | **Quản lý kho** | 7.88d | 2015-11-26 08:00 A | 2015-12-07 16:00 |  | 56% | 3.5d | 0d |  | 9h | 5h |
| 18 | 1.6.1 | Nghiệp vụ | 4h | 2015-12-07 11:00 | 2015-12-07 16:00 | 16 |  |  | 0d | Lệ Huyền | 4h |  |
| 19 | 1.6.2 | Báo cáo | 5h | 2015-11-26 08:00 A | 2015-11-26 14:00 A |  | 100% |  |  | Chiến Thắng | 5h | 5h |
| 20 | 1.7 | **Tài sản cố định** | 0.62d | 2015-11-26 14:00 A | 2015-11-27 10:00 A |  | 100% |  |  |  | 5h | 5h |
| 21 | 1.7.1 | Nghiệp vụ | 2h | 2015-11-26 14:00 A | 2015-11-26 16:00 A | 19 | 100% |  |  | Chiến Thắng | 2h | 2h |
| 22 | 1.7.2 | Báo cáo | 3h | 2015-11-26 16:00 A | 2015-11-27 10:00 A | 21 | 100% |  |  | Chiến Thắng | 3h | 3h |
| 23 | 1.8 | **Chi phí giá thành** | 0.75d | 2015-11-27 10:00 A | 2015-11-27 17:00 A |  | 100% |  |  |  | 6h | 6h |
| 24 | 1.8.1 | Nghiệp vụ | 2h | 2015-11-27 10:00 A | 2015-11-27 12:00 A | 22 | 100% |  |  | Chiến Thắng | 2h | 2h |
| 25 | 1.8.2 | Báo cáo | 4h | 2015-11-27 13:00 A | 2015-11-27 17:00 A | 24 | 100% |  |  | Chiến Thắng | 4h | 4h |

Notes:
- 1: - Thêm logo và chỉnh sửa header: Logo công ty nằm bên trái và thông tin công ty nằm bên phải./ - Canh chỉnh layout report: theo guideline (lưu ư canh đều các control, không để qua trang khác).

| ID | WBS | Task | Duration | Start | Finish | Predecessors | Complete | Resources | Work | Actual work |
| --- | --- | --- | --- | --- | --- | --- | --- | --- | --- | --- |
| 26 | 1.9 | **Thuế GTGT** | 1d | 2015-11-30 08:00 A | 2015-11-30 17:00 A |  | 100% |  | 8h | 8h |
| 27 | 1.9.1 | Nghiệp vụ | 2h | 2015-11-30 08:00 A | 2015-11-30 10:00 A | 25 | 100% | Chiến Thắng | 2h | 2h |
| 28 | 1.9.2 | Báo cáo | 6h | 2015-11-30 10:00 A | 2015-11-30 17:00 A | 27 | 100% | Chiến Thắng | 6h | 6h |
| 29 | 1.10 | **Thuế Khác** | 0.75d | 2015-12-01 08:00 A | 2015-12-01 15:00 A |  | 100% |  | 6h | 6h |
| 30 | 1.10.1 | Nghiệp vụ | 2h | 2015-12-01 08:00 A | 2015-12-01 10:00 A | 28 | 100% | Chiến Thắng | 2h | 2h |
| 31 | 1.10.2 | Báo cáo | 4h | 2015-12-01 10:00 A | 2015-12-01 15:00 A | 30 | 100% | Chiến Thắng | 4h | 4h |
| 32 | 1.11 | **Tổng hợp** | 1.25d | 2015-12-01 15:00 A | 2015-12-02 17:00 A |  | 100% |  | 10h | 10h |
| 33 | 1.11.1 | Nghiệp vụ | 3h | 2015-12-01 15:00 A | 2015-12-02 09:00 A | 31 | 100% | Chiến Thắng | 3h | 3h |
| 34 | 1.11.2 | Báo cáo | 7h | 2015-12-02 09:00 A | 2015-12-02 17:00 A | 33 | 100% | Chiến Thắng | 7h | 7h |
