# [ASOFT-CRM]_Implementation_Shedule

Schedule from MS Project, 2018-01-24 to 2018-03-16, status date 2018-02-07, costs in $, A marks actual dates.
<Project Name>
The Centers for Disease Control and Prevention

## Calendars

- Standard: Mon-Fri 08:00-12:00, 13:00-17:00; Sat-Sun off. Exceptions (off unless hours are given): 2018-02-12 to 2018-02-20 (Tết âm lịch 2018).

## Resources

| Resource | Rate | Cost per use |
| --- | --- | --- |
| Phát Danh | 8.75 | 17.5 |
| Hoàng Vũ | 8.75 | 8.75 |
| Quang Hoàng | 8.75 | 8.75 |
| Thị Phượng | 8.75 | 8.75 |
| Thành Luân | 8.75 | 8.75 |
| DEV 1 | 8.75 | 8.75 |
| DEV 2 | 8.75 | 8.75 |
| Bảo Đăng | 8.75 | 8.75 |
| Văn Tài | 8.75 | 8.75 |
| Tấn Đạt | 8.75 | 8.75 |

## Schedule

| ID | WBS | Task | Duration | Start | Finish | Predecessors | Complete | Remaining | Baseline start | Baseline finish | Baseline duration | Baseline 1 start | Baseline 1 finish | Total slack | Free slack | Constraint | Resources | Work | Actual work | Cost | Baseline cost | Actual cost |
| --- | --- | --- | --- | --- | --- | --- | --- | --- | --- | --- | --- | --- | --- | --- | --- | --- | --- | --- | --- | --- | --- | --- |
| 1 | 1 | **ASOFT-CRM** | 30.9d | 2018-01-24 08:00 A | 2018-03-16 16:12 |  | 15% | 26.19d | 2018-01-24 08:00 | 2018-03-16 16:12 | 30.9d | 2018-01-24 08:00 | 2018-03-16 16:12 | -22.4d | 0d | finish no later than 2017-12-13 17:00 |  | 367.4h | 56h | 4,159.75 | 3,372.25 | 568.75 |
| 2 | 1.1 | **Analysis** | 20.5d | 2018-01-24 08:00 A | 2018-03-02 12:00 |  | 29% | 14.46d | 2018-01-24 08:00 | 2018-03-02 12:00 | 20.5d | 2018-01-24 08:00 | 2018-03-02 12:00 | -12d | 0d |  |  | 190h | 56h | 1,898.75 | 1,111.25 | 568.75 |
| 3 | 1.1.1 | **Yêu cầu** | 17.5d | 2018-01-24 08:00 A | 2018-02-27 12:00 |  | 77% | 4d | 2018-01-24 08:00 | 2018-02-27 12:00 | 17.5d | 2018-01-24 08:00 | 2018-02-27 12:00 | -10.25d | 0d |  |  | 70h | 54h | 700 | 306.25 | 542.5 |
| 4 | 1.1.1.1 | Bổ sung lấy mã phân tích dự án để bổ sung chọn dự án. | 8h | 2018-01-24 08:00 A | 2018-01-24 17:00 A |  | 100% |  | 2018-01-24 08:00 | 2018-01-24 08:30 | 0.5h | 2018-01-24 08:00 | 2018-01-24 17:00 |  |  |  | Tấn Đạt | 8h | 8h | 78.75 | 13.12 | 78.75 |
| 5 | 1.1.1.2 | Bổ sung cho phép chọn 1 or nhiều liên hệ của khách hàng | 8h | 2018-01-25 08:00 A | 2018-01-25 17:00 A | 4 | 100% |  | 2018-01-24 08:30 | 2018-01-24 09:00 | 0.5h | 2018-01-25 08:00 | 2018-01-25 17:00 |  |  |  | Tấn Đạt | 8h | 8h | 78.75 | 13.12 | 78.75 |
| 6 | 1.1.1.3 | BS thiết lập chọn MPT dự án để gọi lên combobox | 8h | 2018-01-26 08:00 A | 2018-01-26 17:00 A | 5 | 100% |  | 2018-01-24 09:00 | 2018-01-24 09:30 | 0.5h | 2018-01-26 08:00 | 2018-01-26 17:00 |  |  |  | Tấn Đạt | 8h | 8h | 78.75 | 13.12 | 78.75 |
| 7 | 1.1.1.4 | Sửa nghiệp vụ [Yêu cầu]: bổ sung thêm các thông tin yêu cầu nếu chưa có, thêm phân loại cần thiết | 10h | 2018-01-29 08:00 A | 2018-01-30 10:00 A | 6 | 100% |  | 2018-01-24 09:30 | 2018-01-24 11:30 | 2h | 2018-01-29 08:00 | 2018-01-30 10:00 |  |  |  | Tấn Đạt | 10h | 10h | 96.25 | 26.25 | 96.25 |
| 8 | 1.1.1.5 | Bổ sung chức năng [Follow] | 12h | 2018-02-26 08:00 | 2018-02-27 12:00 |  |  |  | 2018-02-26 08:00 | 2018-02-27 12:00 | 12h | 2018-02-26 08:00 | 2018-02-27 12:00 | -56.34d | 0d | start no earlier than 2018-02-26 08:00 | Thị Phượng | 12h |  | 113.75 | 113.75 |  |
| 9 | 1.1.1.6 | Bổ sung xử lý Add task và bắn qua QLCV | 4h | 2018-01-30 10:00 | 2018-01-30 15:00 | 7 |  |  | 2018-01-24 11:30 | 2018-01-24 14:00 | 1.5h | 2018-01-30 10:00 | 2018-01-30 15:00 | -45.15d | 0d |  | Tấn Đạt | 4h |  | 43.75 | 21.88 |  |
| 10 | 1.1.1.7 | Nếu trạng thái là complain sẽ gửi email cho danh sách follower | 4h | 2018-01-30 15:00 A | 2018-01-31 10:00 A | 9 | 100% |  | 2018-01-24 14:00 | 2018-01-24 15:00 | 1h | 2018-01-30 15:00 | 2018-01-31 10:00 |  |  |  | Tấn Đạt | 4h | 4h | 43.75 | 17.5 | 43.75 |
| 11 | 1.1.1.8 | Bổ sung xuất excel màn hình [Yêu cầu] | 4h | 2018-01-31 10:00 A | 2018-01-31 15:00 A | 10 | 100% |  | 2018-01-24 15:00 | 2018-01-24 16:00 | 1h | 2018-01-31 10:00 | 2018-01-31 15:00 |  |  |  | Tấn Đạt | 4h | 4h | 43.75 | 17.5 | 43.75 |
| 12 | 1.1.1.9 | Gửi mail cho khách hàng khi hoàn tất yêu cầu của khách hàng kèm theo link đánh giá (theo mẫu) | 8h | 2018-01-31 15:00 A | 2018-02-01 15:00 A | 11 | 100% |  | 2018-01-24 16:00 | 2018-01-24 17:00 | 1h | 2018-01-31 15:00 | 2018-02-01 15:00 |  |  |  | Tấn Đạt | 8h | 8h | 78.75 | 17.5 | 78.75 |
| 13 | 1.1.1.10 | Màn hình khách hàng đánh giá | 4h | 2018-02-01 15:00 A | 2018-02-02 10:00 A | 12 | 100% |  | 2018-01-25 08:00 | 2018-01-25 14:00 | 5h | 2018-02-01 15:00 | 2018-02-02 10:00 |  |  |  | Tấn Đạt | 4h | 4h | 43.75 | 52.5 | 43.75 |
| 14 | 1.1.2 | **Đơn hàng bán** | 2.25d | 2018-02-02 10:00 A | 2018-02-06 12:00 |  | 11% | 2d | 2018-01-25 14:00 | 2018-01-25 17:00 | 0.38d | 2018-02-02 10:00 | 2018-02-06 12:00 | -1d | 0d |  |  | 18h | 2h | 183.75 | 52.5 | 26.25 |
| 15 | 1.1.2.1 | Màn hình [Đơn hàng bán] bổ sung phân loại (Hợp đồng và đơn hàng) để quản lý | 8h | 2018-02-02 10:00 | 2018-02-05 10:00 | 13 |  |  | 2018-01-25 14:00 | 2018-01-25 14:30 | 0.5h | 2018-02-02 10:00 | 2018-02-05 10:00 | -47.46d | 0d |  | Tấn Đạt | 8h |  | 78.75 | 13.12 |  |
| 16 | 1.1.2.2 | Tạo bảng quản lý Hợp đồng riêng tách với [Đơn hàng bán] | 2h | 2018-02-05 10:00 A | 2018-02-05 12:00 A | 15 | 100% |  | 2018-01-25 14:30 | 2018-01-25 16:30 | 2h | 2018-02-05 10:00 | 2018-02-05 12:00 |  |  |  | Tấn Đạt | 2h | 2h | 26.25 | 26.25 | 26.25 |
| 17 | 1.1.2.3 | Đính MPT để quản lý mã số hợp đồng. | 8h | 2018-02-05 13:00 | 2018-02-06 12:00 | 16 |  |  | 2018-01-25 16:30 | 2018-01-25 17:00 | 0.5h | 2018-02-05 13:00 | 2018-02-06 12:00 | -52.84d | 0d |  | Tấn Đạt | 8h |  | 78.75 | 13.12 |  |
| 18 | 1.1.3 | **Others** | 11d | 2018-02-06 13:00 | 2018-03-02 12:00 |  |  |  | 2018-01-26 08:00 | 2018-03-02 12:00 | 18.5d | 2018-02-06 13:00 | 2018-03-02 12:00 | -56.34d | 0d |  |  | 54h |  | 542.5 | 385 |  |
| 19 | 1.1.3.1 | Bổ sung chức năng duyệt | 24h | 2018-02-27 13:00 | 2018-03-02 12:00 | 8 |  |  | 2018-02-27 13:00 | 2018-03-02 12:00 | 24h | 2018-02-27 13:00 | 2018-03-02 12:00 | -56.34d | 0d |  | Thị Phượng | 24h |  | 218.75 | 218.75 |  |
| 20 | 1.1.3.2 | Bổ sung lấy địa chỉ email của khách hàng khi gửi mail | 1h | 2018-02-06 13:00 | 2018-02-06 14:00 | 17 |  |  | 2018-01-26 08:00 | 2018-01-26 09:00 | 1h | 2018-02-06 13:00 | 2018-02-06 14:00 | -52.84d | 0d |  | Tấn Đạt | 1h |  | 17.5 | 17.5 |  |
| 21 | 1.1.3.3 | Bổ sung hiển thị thông tin cơ hội khi tạo phiếu báo giá | 2h | 2018-02-06 14:00 | 2018-02-06 16:00 | 20 |  |  | 2018-01-26 09:00 | 2018-01-26 10:00 | 1h | 2018-02-06 14:00 | 2018-02-06 16:00 | -52.84d | 0d |  | Tấn Đạt | 2h |  | 26.25 | 17.5 |  |
| 22 | 1.1.3.4 | Sử dụng mã phân tích đối tượng CI để đưa vào CRM | 8h | 2018-02-06 16:00 | 2018-02-07 16:00 | 21 |  |  | 2018-01-26 10:00 | 2018-01-26 11:00 | 1h | 2018-02-06 16:00 | 2018-02-07 16:00 | -52.84d | 0d |  | Tấn Đạt | 8h |  | 78.75 | 17.5 |  |
| 23 | 1.1.3.5 | Bổ sung hiển thị cột tổng tiền lên lưới tìm kiếm | 4h | 2018-02-07 16:00 | 2018-02-08 11:00 | 22 |  |  | 2018-01-26 11:00 | 2018-01-26 14:00 | 2h | 2018-02-07 16:00 | 2018-02-08 11:00 | -52.84d | 0d |  | Tấn Đạt | 4h |  | 43.75 | 26.25 |  |
| 24 | 1.1.3.6 | Tích hợp xử lý tổng đài qua CRM | 8h | 2018-02-08 11:00 | 2018-02-09 11:00 | 23 |  |  | 2018-01-26 14:00 | 2018-01-26 16:00 | 2h | 2018-02-08 11:00 | 2018-02-09 11:00 | -52.84d | 0d |  | Tấn Đạt | 8h |  | 78.75 | 26.25 |  |
| 25 | 1.1.3.7 | Sử dụng MPT Object để PL nhóm KH ABCD, nhóm dịch vụ KH đang sử dụng | 6h | 2018-02-09 11:00 | 2018-02-21 09:00 | 24 |  |  | 2018-01-26 16:00 | 2018-01-29 10:00 | 3h | 2018-02-09 11:00 | 2018-02-21 09:00 | -52.84d | 0d |  | Tấn Đạt | 6h |  | 61.25 | 35 |  |
| 26 | 1.1.3.8 | Lưu điểm phản hồi của khách hàng khi KH đánh giá. | 1h | 2018-02-21 09:00 | 2018-02-21 10:00 | 25 |  |  | 2018-01-29 10:00 | 2018-01-29 12:00 | 2h | 2018-02-21 09:00 | 2018-02-21 10:00 | -52.84d | 0d |  | Tấn Đạt | 1h |  | 17.5 | 26.25 |  |

Notes:
- 4: Bổ sung lấy mă phân tích dự án để bổ sung chọn dự án. / Tài liệu phân tích trên Github: / https://github.com/ASOFT-Solution/asoft-test-svn/tree/master/2018/CRM/03_DetailDesign/ - CRMF0011_Thiet lap ma phan tich (Ver 1.0)/ - CRMF2081_Cap nhat yeu cau (Ver 5.0)/ - CRMF2082_Xem chi tiet yeu cau (Ver 7.0)/ https://github.com/ASOFT-Solution/asoft-test-svn/tree/master/2018/CRM/Script%20DB/ - CRMT00000
- 5: Bổ sung cho phép chọn 1 or nhiều liên hệ của khách hàng./ Tài liệu phân tích trên Github: / https://github.com/ASOFT-Solution/asoft-test-svn/tree/master/2018/CRM/03_DetailDesign/ - CRMF2082_Xem chi tiet yeu cau (Ver 6.0) / - CRMF9002_Chon lien he (Ver 5.0)
- 6: BS thiết lập chọn MPT dự án để gọi lên combobox. / Tài liệu phân tích trên Github: / https://github.com/ASOFT-Solution/asoft-test-svn/tree/master/2018/CRM/03_DetailDesign/ - CRMF0011_Thiet lap ma phan tich (Ver 1.0) / https://github.com/ASOFT-Solution/asoft-test-svn/tree/master/2018/CRM/Script%20DB/ - CRMT00000
- 7: Sửa nghiệp vụ [Yêu cầu]: bổ sung thêm các thông tin yêu cầu nếu chưa có, thêm phân loại cần thiết/ Tài liệu phân tích trên Github: / https://github.com/ASOFT-Solution/asoft-test-svn/tree/master/2018/CRM/03_DetailDesign/ - CRMF2080_Danh muc yeu cau (Ver 3.0) / - CRMF2081_Cap nhat yeu cau (Ver 4.0) / - CRMF2082_Xem chi tiet yeu cau (Ver 5.0) / - CRMF2083_Cap nhat xu ly cong viec (Ver 1.0)
- 10: Nếu trạng thái là complain sẽ gửi email cho danh sách follower / Tài liệu phân tích trên Github: / https://github.com/ASOFT-Solution/asoft-test-svn/tree/master/2018/CRM/03_DetailDesign/ - CRMF2082_Xem chi tiet yeu cau (Ver 9.0)
- 11: Bổ sung xuất excel màn h́nh [Yêu cầu]/ Tài liệu phân tích trên Github: / https://github.com/ASOFT-Solution/asoft-test-svn/tree/master/2018/CRM/03_DetailDesign/ - CRMF2080_Danh muc yeu cau (Ver 4.0) / https://github.com/ASOFT-Solution/asoft-test-svn/tree/master/2018/CRM/Script%20DB/ - CRMT20803
- 12: Gửi mail cho khách hàng khi hoàn tất yêu cầu của khách hàng kèm theo link đánh giá (theo mẫu) / Tài liệu phân tích trên Github: / https://github.com/ASOFT-Solution/asoft-test-svn/tree/master/2018/CRM/03_DetailDesign/ - CRMF2082_Xem chi tiet yeu cau (Ver 8.0)
- 13: Mŕn hěnh khách hŕng đánh giá / Tŕi liệu phân tích tręn Github: / https://github.com/ASOFT-Solution/asoft-test-svn/tree/master/2018/CRM/03_DetailDesign/ - CRMF2061_Đanh gia ho tro khach hang (Ver 1.0)
- 16: Tạo bảng quản lư Hợp đồng riêng tách với [Đơn hàng bán] / Tài liệu trên Github: / https://github.com/ASOFT-Solution/asoft-test-svn/tree/master/2018/SO/Script%20DB/ - CRMT2000 / - CRMT2001

| ID | WBS | Task | Type | Duration | Start | Finish | Predecessors | Baseline start | Baseline finish | Baseline duration | Baseline 1 start | Baseline 1 finish | Total slack | Free slack | Constraint | Resources | Work | Cost | Baseline cost |
| --- | --- | --- | --- | --- | --- | --- | --- | --- | --- | --- | --- | --- | --- | --- | --- | --- | --- | --- | --- |
| 27 | 1.1.4 | **Báo cáo** |  | 6d | 2018-02-21 10:00 | 2018-03-01 10:00 |  | 2018-01-29 13:00 | 2018-02-02 17:00 | 4.5d | 2018-02-21 10:00 | 2018-03-01 10:00 | -52.84d | 0d |  |  | 48h | 472.5 | 367.5 |
| 28 | 1.1.4.1 | Báo cáo thời gian xử lý 1 lỗi, yêu cầu hoặc nhiều từ dự án ( thời gian CON nhập yêu cầu, thời gian SOF phản hồi deadline, thời gian SOF xử lý, thời gian CON xử lý hoàn tất yêu câu) |  | 8h | 2018-02-21 10:00 | 2018-02-22 10:00 | 26 | 2018-01-29 13:00 | 2018-01-30 10:00 | 6h | 2018-02-21 10:00 | 2018-02-22 10:00 | -52.84d | 0d |  | Tấn Đạt | 8h | 78.75 | 61.25 |
| 29 | 1.1.4.2 | Báo cáo thống kê kết quả CON kiểm tra 1 vấn đề sau khi SOF phản hồi xử lý hoàn tất |  | 8h | 2018-02-22 10:00 | 2018-02-23 10:00 | 28 | 2018-01-30 10:00 | 2018-01-30 17:00 | 6h | 2018-02-22 10:00 | 2018-02-23 10:00 | -52.84d | 0d |  | Tấn Đạt | 8h | 78.75 | 61.25 |
| 30 | 1.1.4.3 | Báo cáo so sánh cơ hội tuần này với tuần trước, kỳ này và kỳ trước...: số lượng, giá trị,… |  | 8h | 2018-02-23 10:00 | 2018-02-26 10:00 | 29 | 2018-01-31 08:00 | 2018-01-31 15:00 | 6h | 2018-02-23 10:00 | 2018-02-26 10:00 | -52.84d | 0d |  | Tấn Đạt | 8h | 78.75 | 61.25 |
| 31 | 1.1.4.4 | Báo cáo chi tiết kết quả thực hiện chiến dịch hàng tuần, hàng tháng,… theo nhân viên. |  | 8h | 2018-02-26 10:00 | 2018-02-27 10:00 | 30 | 2018-01-31 15:00 | 2018-02-01 12:00 | 6h | 2018-02-26 10:00 | 2018-02-27 10:00 | -52.84d | 0d |  | Tấn Đạt | 8h | 78.75 | 61.25 |
| 32 | 1.1.4.5 | Báo cáo các HelpDesk reopen, ghi nhân thông tin reopen bao nhiêu lần, nôi dung từng lần reopen |  | 8h | 2018-02-27 10:00 | 2018-02-28 10:00 | 31 | 2018-02-01 13:00 | 2018-02-02 10:00 | 6h | 2018-02-27 10:00 | 2018-02-28 10:00 | -52.84d | 0d |  | Tấn Đạt | 8h | 78.75 | 61.25 |
| 33 | 1.1.4.6 | Báo cáo tổng thời gian đã xử lý HelpDesk theo nhân viên |  | 8h | 2018-02-28 10:00 | 2018-03-01 10:00 | 32 | 2018-02-02 10:00 | 2018-02-02 17:00 | 6h | 2018-02-28 10:00 | 2018-03-01 10:00 | -52.84d | 0d |  | Tấn Đạt | 8h | 78.75 | 61.25 |
| 34 | 1.2 | Analysis Completed | milestone | 0d | 2018-03-02 12:00 | 2018-03-02 12:00 | 18 | 2018-03-02 12:00 | 2018-03-02 12:00 | 0d | 2018-03-02 12:00 | 2018-03-02 12:00 | -49.5d | 0d |  |  |  |  |  |
| 35 | 1.3 | **Development** |  | 9.56d | 2018-02-27 13:00 | 2018-03-13 08:30 |  | 2018-02-27 13:00 | 2018-03-13 08:30 | 9.56d | 2018-02-27 13:00 | 2018-03-13 08:30 | -59.9d | 0d |  |  | 100h | 1,111.25 | 1,111.25 |
| 36 | 1.3.1 | **Yêu cầu** |  | 3.19d | 2018-02-27 13:00 | 2018-03-02 14:30 |  | 2018-02-27 13:00 | 2018-03-02 14:30 | 3.19d | 2018-02-27 13:00 | 2018-03-02 14:30 | -58.34d | 0d |  |  | 25h | 306.25 | 306.25 |
| 37 | 1.3.1.1 | Bổ sung lấy mã phân tích dự án để bổ sung chọn dự án. |  | 0.5h | 2018-03-01 08:30 | 2018-03-01 09:00 | 4 | 2018-03-01 08:30 | 2018-03-01 09:00 | 0.5h | 2018-03-01 08:30 | 2018-03-01 09:00 | -59.9d | 0d | start no earlier than 2018-03-01 08:30 | Thành Luân | 0.5h | 13.12 | 13.12 |
| 38 | 1.3.1.2 | Bổ sung cho phép chọn 1 or nhiều liên hệ của khách hàng |  | 0.5h | 2018-03-01 09:00 | 2018-03-01 09:30 | 5, 37 | 2018-03-01 09:00 | 2018-03-01 09:30 | 0.5h | 2018-03-01 09:00 | 2018-03-01 09:30 | -59.9d | 0d |  | Thành Luân | 0.5h | 13.12 | 13.12 |
| 39 | 1.3.1.3 | BS thiết lập chọn MPT dự án để gọi lên combobox |  | 0.5h | 2018-03-01 09:30 | 2018-03-01 10:00 | 6, 38 | 2018-03-01 09:30 | 2018-03-01 10:00 | 0.5h | 2018-03-01 09:30 | 2018-03-01 10:00 | -59.9d | 0d |  | Thành Luân | 0.5h | 13.12 | 13.12 |
| 40 | 1.3.1.4 | Sửa nghiệp vụ [Yêu cầu]: bổ sung thêm các thông tin yêu cầu nếu chưa có, thêm phân loại cần thiết |  | 2h | 2018-03-01 10:00 | 2018-03-01 12:00 | 7, 39 | 2018-03-01 10:00 | 2018-03-01 12:00 | 2h | 2018-03-01 10:00 | 2018-03-01 12:00 | -59.9d | 0d |  | Thành Luân | 2h | 26.25 | 26.25 |
| 41 | 1.3.1.5 | Bổ sung chức năng [Follow] |  | 12h | 2018-02-27 13:00 | 2018-02-28 17:00 | 8 | 2018-02-27 13:00 | 2018-02-28 17:00 | 12h | 2018-02-27 13:00 | 2018-02-28 17:00 | -54.84d | 0d |  | Quang Hoàng | 12h | 113.75 | 113.75 |
| 42 | 1.3.1.6 | Bổ sung xử lý Add task và bắn qua QLCV |  | 1.5h | 2018-03-01 13:00 | 2018-03-01 14:30 | 9, 40 | 2018-03-01 13:00 | 2018-03-01 14:30 | 1.5h | 2018-03-01 13:00 | 2018-03-01 14:30 | -59.9d | 0d |  | Thành Luân | 1.5h | 21.88 | 21.88 |
| 43 | 1.3.1.7 | Nếu trạng thái là complain sẽ gửi email cho danh sách follower |  | 1h | 2018-03-01 14:30 | 2018-03-01 15:30 | 10, 42 | 2018-03-01 14:30 | 2018-03-01 15:30 | 1h | 2018-03-01 14:30 | 2018-03-01 15:30 | -59.9d | 0d |  | Thành Luân | 1h | 17.5 | 17.5 |
| 44 | 1.3.1.8 | Bổ sung xuất excel màn hình [Yêu cầu] |  | 1h | 2018-03-01 15:30 | 2018-03-01 16:30 | 11, 43 | 2018-03-01 15:30 | 2018-03-01 16:30 | 1h | 2018-03-01 15:30 | 2018-03-01 16:30 | -59.9d | 0d |  | Thành Luân | 1h | 17.5 | 17.5 |
| 45 | 1.3.1.9 | Gửi mail cho khách hàng khi hoàn tất yêu cầu của khách hàng kèm theo link đánh giá (theo mẫu) |  | 1h | 2018-03-01 16:30 | 2018-03-02 08:30 | 12, 44 | 2018-03-01 16:30 | 2018-03-02 08:30 | 1h | 2018-03-01 16:30 | 2018-03-02 08:30 | -59.9d | 0d |  | Thành Luân | 1h | 17.5 | 17.5 |
| 46 | 1.3.1.10 | Màn hình khách hàng đánh giá |  | 5h | 2018-03-02 08:30 | 2018-03-02 14:30 | 13, 45 | 2018-03-02 08:30 | 2018-03-02 14:30 | 5h | 2018-03-02 08:30 | 2018-03-02 14:30 | -59.9d | 0d |  | Thành Luân | 5h | 52.5 | 52.5 |
| 47 | 1.3.2 | **Đơn hàng bán** |  | 0.38d | 2018-03-02 14:30 | 2018-03-05 08:30 |  | 2018-03-02 14:30 | 2018-03-05 08:30 | 0.38d | 2018-03-02 14:30 | 2018-03-05 08:30 | -59.9d | 0d |  |  | 3h | 52.5 | 52.5 |
| 48 | 1.3.2.1 | Màn hình [Đơn hàng bán] bổ sung phân loại (Hợp đồng và đơn hàng) để quản lý |  | 0.5h | 2018-03-02 14:30 | 2018-03-02 15:00 | 15, 46 | 2018-03-02 14:30 | 2018-03-02 15:00 | 0.5h | 2018-03-02 14:30 | 2018-03-02 15:00 | -59.9d | 0d |  | Thành Luân | 0.5h | 13.12 | 13.12 |
| 49 | 1.3.2.2 | Tạo bảng quản lý Hợp đồng riêng tách với [Đơn hàng bán] |  | 2h | 2018-03-02 15:00 | 2018-03-02 17:00 | 16, 48 | 2018-03-02 15:00 | 2018-03-02 17:00 | 2h | 2018-03-02 15:00 | 2018-03-02 17:00 | -59.9d | 0d |  | Thành Luân | 2h | 26.25 | 26.25 |
| 50 | 1.3.2.3 | Đính MPT để quản lý mã số hợp đồng. |  | 0.5h | 2018-03-05 08:00 | 2018-03-05 08:30 | 17, 49 | 2018-03-05 08:00 | 2018-03-05 08:30 | 0.5h | 2018-03-05 08:00 | 2018-03-05 08:30 | -59.9d | 0d |  | Thành Luân | 0.5h | 13.12 | 13.12 |

| ID | WBS | Task | Type | Duration | Start | Finish | Predecessors | Baseline start | Baseline finish | Baseline duration | Baseline 1 start | Baseline 1 finish | Total slack | Free slack | Resources | Work | Cost | Baseline cost |
| --- | --- | --- | --- | --- | --- | --- | --- | --- | --- | --- | --- | --- | --- | --- | --- | --- | --- | --- |
| 51 | 1.3.3 | **Others** |  | 3d | 2018-03-02 13:00 | 2018-03-07 12:00 |  | 2018-03-02 13:00 | 2018-03-07 12:00 | 3d | 2018-03-02 13:00 | 2018-03-07 12:00 | -59.34d | 0d |  | 36h | 385 | 385 |
| 52 | 1.3.3.1 | Bổ sung chức năng duyệt |  | 24h | 2018-03-02 13:00 | 2018-03-07 12:00 | 19, 41 | 2018-03-02 13:00 | 2018-03-07 12:00 | 24h | 2018-03-02 13:00 | 2018-03-07 12:00 | -56.34d | 0d | Quang Hoàng | 24h | 218.75 | 218.75 |
| 53 | 1.3.3.2 | Bổ sung lấy địa chỉ email của khách hàng khi gửi mail |  | 1h | 2018-03-05 08:30 | 2018-03-05 09:30 | 20, 50 | 2018-03-05 08:30 | 2018-03-05 09:30 | 1h | 2018-03-05 08:30 | 2018-03-05 09:30 | -59.9d | 0d | Thành Luân | 1h | 17.5 | 17.5 |
| 54 | 1.3.3.3 | Bổ sung hiển thị thông tin cơ hội khi tạo phiếu báo giá |  | 1h | 2018-03-05 09:30 | 2018-03-05 10:30 | 21, 53 | 2018-03-05 09:30 | 2018-03-05 10:30 | 1h | 2018-03-05 09:30 | 2018-03-05 10:30 | -59.9d | 0d | Thành Luân | 1h | 17.5 | 17.5 |
| 55 | 1.3.3.4 | Sử dụng mã phân tích đối tượng CI để đưa vào CRM |  | 1h | 2018-03-05 10:30 | 2018-03-05 11:30 | 22, 54 | 2018-03-05 10:30 | 2018-03-05 11:30 | 1h | 2018-03-05 10:30 | 2018-03-05 11:30 | -59.9d | 0d | Thành Luân | 1h | 17.5 | 17.5 |
| 56 | 1.3.3.5 | Bổ sung hiển thị cột tổng tiền lên lưới tìm kiếm |  | 2h | 2018-03-05 11:30 | 2018-03-05 14:30 | 23, 55 | 2018-03-05 11:30 | 2018-03-05 14:30 | 2h | 2018-03-05 11:30 | 2018-03-05 14:30 | -59.9d | 0d | Thành Luân | 2h | 26.25 | 26.25 |
| 57 | 1.3.3.6 | Tích hợp xử lý tổng đài qua CRM |  | 2h | 2018-03-05 14:30 | 2018-03-05 16:30 | 24, 56 | 2018-03-05 14:30 | 2018-03-05 16:30 | 2h | 2018-03-05 14:30 | 2018-03-05 16:30 | -59.9d | 0d | Thành Luân | 2h | 26.25 | 26.25 |
| 58 | 1.3.3.7 | Sử dụng MPT Object để PL nhóm KH ABCD, nhóm dịch vụ KH đang sử dụng |  | 3h | 2018-03-05 16:30 | 2018-03-06 10:30 | 25, 57 | 2018-03-05 16:30 | 2018-03-06 10:30 | 3h | 2018-03-05 16:30 | 2018-03-06 10:30 | -59.9d | 0d | Thành Luân | 3h | 35 | 35 |
| 59 | 1.3.3.8 | Lưu điểm phản hồi của khách hàng khi KH đánh giá. |  | 2h | 2018-03-06 10:30 | 2018-03-06 13:30 | 26, 58 | 2018-03-06 10:30 | 2018-03-06 13:30 | 2h | 2018-03-06 10:30 | 2018-03-06 13:30 | -59.9d | 0d | Thành Luân | 2h | 26.25 | 26.25 |
| 60 | 1.3.4 | **Báo cáo** |  | 4.5d | 2018-03-06 13:30 | 2018-03-13 08:30 |  | 2018-03-06 13:30 | 2018-03-13 08:30 | 4.5d | 2018-03-06 13:30 | 2018-03-13 08:30 | -59.9d | 0d |  | 36h | 367.5 | 367.5 |
| 61 | 1.3.4.1 | Báo cáo thời gian xử lý 1 lỗi, yêu cầu hoặc nhiều từ dự án ( thời gian CON nhập yêu cầu, thời gian SOF phản hồi deadline, thời gian SOF xử lý, thời gian CON xử lý hoàn tất yêu câu) |  | 6h | 2018-03-06 13:30 | 2018-03-07 10:30 | 28, 59 | 2018-03-06 13:30 | 2018-03-07 10:30 | 6h | 2018-03-06 13:30 | 2018-03-07 10:30 | -59.9d | 0d | Thành Luân | 6h | 61.25 | 61.25 |
| 62 | 1.3.4.2 | Báo cáo thống kê kết quả CON kiểm tra 1 vấn đề sau khi SOF phản hồi xử lý hoàn tất |  | 6h | 2018-03-07 10:30 | 2018-03-08 08:30 | 29, 61 | 2018-03-07 10:30 | 2018-03-08 08:30 | 6h | 2018-03-07 10:30 | 2018-03-08 08:30 | -59.9d | 0d | Thành Luân | 6h | 61.25 | 61.25 |
| 63 | 1.3.4.3 | Báo cáo so sánh cơ hội tuần này với tuần trước, kỳ này và kỳ trước...: số lượng, giá trị,… |  | 6h | 2018-03-08 08:30 | 2018-03-08 15:30 | 30, 62 | 2018-03-08 08:30 | 2018-03-08 15:30 | 6h | 2018-03-08 08:30 | 2018-03-08 15:30 | -59.9d | 0d | Thành Luân | 6h | 61.25 | 61.25 |
| 64 | 1.3.4.4 | Báo cáo chi tiết kết quả thực hiện chiến dịch hàng tuần, hàng tháng,… theo nhân viên. |  | 6h | 2018-03-08 15:30 | 2018-03-09 13:30 | 31, 63 | 2018-03-08 15:30 | 2018-03-09 13:30 | 6h | 2018-03-08 15:30 | 2018-03-09 13:30 | -59.9d | 0d | Thành Luân | 6h | 61.25 | 61.25 |
| 65 | 1.3.4.5 | Báo cáo các HelpDesk reopen, ghi nhân thông tin reopen bao nhiêu lần, nôi dung từng lần reopen |  | 6h | 2018-03-09 13:30 | 2018-03-12 10:30 | 32, 64 | 2018-03-09 13:30 | 2018-03-12 10:30 | 6h | 2018-03-09 13:30 | 2018-03-12 10:30 | -59.9d | 0d | Thành Luân | 6h | 61.25 | 61.25 |
| 66 | 1.3.4.6 | Báo cáo tổng thời gian đã xử lý HelpDesk theo nhân viên |  | 6h | 2018-03-12 10:30 | 2018-03-13 08:30 | 33, 65 | 2018-03-12 10:30 | 2018-03-13 08:30 | 6h | 2018-03-12 10:30 | 2018-03-13 08:30 | -59.9d | 0d | Thành Luân | 6h | 61.25 | 61.25 |
| 67 | 1.4 | Development Completed | milestone | 0d | 2018-01-24 08:00 | 2018-01-24 08:00 |  | 2018-01-24 08:00 | 2018-01-24 08:00 | 0d | 2018-01-24 08:00 | 2018-01-24 08:00 | -29d | 0d |  |  |  |  |
| 68 | 1.5 | **Test** |  | 3.84d | 2018-03-13 08:30 | 2018-03-16 16:12 | 35 | 2018-03-13 08:30 | 2018-03-16 16:12 | 3.84d | 2018-03-13 08:30 | 2018-03-16 16:12 | -59.9d | 0d |  | 38.7h | 574.88 | 574.88 |
| 69 | 1.5.1 | **Yêu cầu** |  | 1.19d | 2018-03-13 08:30 | 2018-03-14 10:00 |  | 2018-03-13 08:30 | 2018-03-14 10:00 | 1.19d | 2018-03-13 08:30 | 2018-03-14 10:00 | -59.9d | 0d |  | 13.5h | 205.62 | 205.62 |
| 70 | 1.5.1.1 | Bổ sung lấy mã phân tích dự án để bổ sung chọn dự án. |  | 0.5h | 2018-03-13 08:30 | 2018-03-13 09:00 |  | 2018-03-13 08:30 | 2018-03-13 09:00 | 0.5h | 2018-03-13 08:30 | 2018-03-13 09:00 | -59.9d | 0d | Tấn Đạt | 0.5h | 13.12 | 13.12 |
| 71 | 1.5.1.2 | Bổ sung cho phép chọn 1 or nhiều liên hệ của khách hàng |  | 0.5h | 2018-03-13 09:00 | 2018-03-13 09:30 | 70 | 2018-03-13 09:00 | 2018-03-13 09:30 | 0.5h | 2018-03-13 09:00 | 2018-03-13 09:30 | -59.9d | 0d | Tấn Đạt | 0.5h | 13.12 | 13.12 |
| 72 | 1.5.1.3 | BS thiết lập chọn MPT dự án để gọi lên combobox |  | 0.5h | 2018-03-13 09:30 | 2018-03-13 10:00 | 71 | 2018-03-13 09:30 | 2018-03-13 10:00 | 0.5h | 2018-03-13 09:30 | 2018-03-13 10:00 | -59.9d | 0d | Tấn Đạt | 0.5h | 13.12 | 13.12 |
| 73 | 1.5.1.4 | Sửa nghiệp vụ [Yêu cầu]: bổ sung thêm các thông tin yêu cầu nếu chưa có, thêm phân loại cần thiết |  | 2h | 2018-03-13 10:00 | 2018-03-13 12:00 | 72 | 2018-03-13 10:00 | 2018-03-13 12:00 | 2h | 2018-03-13 10:00 | 2018-03-13 12:00 | -59.9d | 0d | Tấn Đạt | 2h | 26.25 | 26.25 |
| 74 | 1.5.1.5 | Bổ sung chức năng [Follow] |  | 4h | 2018-03-13 08:30 | 2018-03-13 13:30 |  | 2018-03-13 08:30 | 2018-03-13 13:30 | 4h | 2018-03-13 08:30 | 2018-03-13 13:30 | -57.06d | 0d | Thị Phượng | 4h | 43.75 | 43.75 |
| 75 | 1.5.1.6 | Bổ sung xử lý Add task và bắn qua QLCV |  | 1h | 2018-03-13 13:00 | 2018-03-13 14:00 | 73 | 2018-03-13 13:00 | 2018-03-13 14:00 | 1h | 2018-03-13 13:00 | 2018-03-13 14:00 | -59.9d | 0d | Tấn Đạt | 1h | 17.5 | 17.5 |
| 76 | 1.5.1.7 | Nếu trạng thái là complain sẽ gửi email cho danh sách follower |  | 1h | 2018-03-13 14:00 | 2018-03-13 15:00 | 75 | 2018-03-13 14:00 | 2018-03-13 15:00 | 1h | 2018-03-13 14:00 | 2018-03-13 15:00 | -59.9d | 0d | Tấn Đạt | 1h | 17.5 | 17.5 |
| 77 | 1.5.1.8 | Bổ sung xuất excel màn hình [Yêu cầu] |  | 1h | 2018-03-13 15:00 | 2018-03-13 16:00 | 76 | 2018-03-13 15:00 | 2018-03-13 16:00 | 1h | 2018-03-13 15:00 | 2018-03-13 16:00 | -59.9d | 0d | Tấn Đạt | 1h | 17.5 | 17.5 |
| 78 | 1.5.1.9 | Gửi mail cho khách hàng khi hoàn tất yêu cầu của khách hàng kèm theo link đánh giá (theo mẫu) |  | 1h | 2018-03-13 16:00 | 2018-03-13 17:00 | 77 | 2018-03-13 16:00 | 2018-03-13 17:00 | 1h | 2018-03-13 16:00 | 2018-03-13 17:00 | -59.9d | 0d | Tấn Đạt | 1h | 17.5 | 17.5 |
| 79 | 1.5.1.10 | Màn hình khách hàng đánh giá |  | 2h | 2018-03-14 08:00 | 2018-03-14 10:00 | 78 | 2018-03-14 08:00 | 2018-03-14 10:00 | 2h | 2018-03-14 08:00 | 2018-03-14 10:00 | -59.9d | 0d | Tấn Đạt | 2h | 26.25 | 26.25 |

| ID | WBS | Task | Type | Duration | Start | Finish | Predecessors | Baseline start | Baseline finish | Baseline duration | Baseline 1 start | Baseline 1 finish | Total slack | Free slack | Resources | Work | Cost | Baseline cost |
| --- | --- | --- | --- | --- | --- | --- | --- | --- | --- | --- | --- | --- | --- | --- | --- | --- | --- | --- |
| 80 | 1.5.2 | **Đơn hàng bán** |  | 0.19d | 2018-03-14 10:00 | 2018-03-14 11:30 |  | 2018-03-14 10:00 | 2018-03-14 11:30 | 0.19d | 2018-03-14 10:00 | 2018-03-14 11:30 | -59.9d | 0d |  | 1.5h | 39.38 | 39.38 |
| 81 | 1.5.2.1 | Màn hình [Đơn hàng bán] bổ sung phân loại (Hợp đồng và đơn hàng) để quản lý |  | 0.5h | 2018-03-14 10:00 | 2018-03-14 10:30 | 79 | 2018-03-14 10:00 | 2018-03-14 10:30 | 0.5h | 2018-03-14 10:00 | 2018-03-14 10:30 | -59.9d | 0d | Tấn Đạt | 0.5h | 13.12 | 13.12 |
| 82 | 1.5.2.2 | Tạo bảng quản lý Hợp đồng riêng tách với [Đơn hàng bán] |  | 0.5h | 2018-03-14 10:30 | 2018-03-14 11:00 | 81 | 2018-03-14 10:30 | 2018-03-14 11:00 | 0.5h | 2018-03-14 10:30 | 2018-03-14 11:00 | -59.9d | 0d | Tấn Đạt | 0.5h | 13.12 | 13.12 |
| 83 | 1.5.2.3 | Đính MPT để quản lý mã số hợp đồng. |  | 0.5h | 2018-03-14 11:00 | 2018-03-14 11:30 | 82 | 2018-03-14 11:00 | 2018-03-14 11:30 | 0.5h | 2018-03-14 11:00 | 2018-03-14 11:30 | -59.9d | 0d | Tấn Đạt | 0.5h | 13.12 | 13.12 |
| 84 | 1.5.3 | **Others** |  | 1.84d | 2018-03-13 13:30 | 2018-03-15 11:12 |  | 2018-03-13 13:30 | 2018-03-15 11:12 | 1.84d | 2018-03-13 13:30 | 2018-03-15 11:12 | -59.02d | 0d |  | 11.7h | 172.38 | 172.38 |
| 85 | 1.5.3.1 | Bổ sung chức năng duyệt |  | 4h | 2018-03-13 13:30 | 2018-03-14 08:30 | 74 | 2018-03-13 13:30 | 2018-03-14 08:30 | 4h | 2018-03-13 13:30 | 2018-03-14 08:30 | -57.06d | 0d | Thị Phượng | 4h | 43.75 | 43.75 |
| 86 | 1.5.3.2 | Bổ sung lấy địa chỉ email của khách hàng khi gửi mail |  | 0.5h | 2018-03-14 11:30 | 2018-03-14 12:00 | 83 | 2018-03-14 11:30 | 2018-03-14 12:00 | 0.5h | 2018-03-14 11:30 | 2018-03-14 12:00 | -59.9d | 0d | Tấn Đạt | 0.5h | 13.12 | 13.12 |
| 87 | 1.5.3.3 | Bổ sung hiển thị thông tin cơ hội khi tạo phiếu báo giá |  | 0.7h | 2018-03-14 13:00 | 2018-03-14 13:42 | 86 | 2018-03-14 13:00 | 2018-03-14 13:42 | 0.7h | 2018-03-14 13:00 | 2018-03-14 13:42 | -59.9d | 0d | Tấn Đạt | 0.7h | 14.88 | 14.88 |
| 88 | 1.5.3.4 | Sử dụng mã phân tích đối tượng CI để đưa vào CRM |  | 1h | 2018-03-14 13:42 | 2018-03-14 14:42 | 87 | 2018-03-14 13:42 | 2018-03-14 14:42 | 1h | 2018-03-14 13:42 | 2018-03-14 14:42 | -59.9d | 0d | Tấn Đạt | 1h | 17.5 | 17.5 |
| 89 | 1.5.3.5 | Bổ sung hiển thị cột tổng tiền lên lưới tìm kiếm |  | 1h | 2018-03-14 14:42 | 2018-03-14 15:42 | 88 | 2018-03-14 14:42 | 2018-03-14 15:42 | 1h | 2018-03-14 14:42 | 2018-03-14 15:42 | -59.9d | 0d | Tấn Đạt | 1h | 17.5 | 17.5 |
| 90 | 1.5.3.6 | Tích hợp xử lý tổng đài qua CRM |  | 2h | 2018-03-14 15:42 | 2018-03-15 08:42 | 89 | 2018-03-14 15:42 | 2018-03-15 08:42 | 2h | 2018-03-14 15:42 | 2018-03-15 08:42 | -59.9d | 0d | Tấn Đạt | 2h | 26.25 | 26.25 |
| 91 | 1.5.3.7 | Sử dụng MPT Object để PL nhóm KH ABCD, nhóm dịch vụ KH đang sử dụng |  | 1.5h | 2018-03-15 08:42 | 2018-03-15 10:12 | 90 | 2018-03-15 08:42 | 2018-03-15 10:12 | 1.5h | 2018-03-15 08:42 | 2018-03-15 10:12 | -59.9d | 0d | Tấn Đạt | 1.5h | 21.88 | 21.88 |
| 92 | 1.5.3.8 | Lưu điểm phản hồi của khách hàng khi KH đánh giá. |  | 1h | 2018-03-15 10:12 | 2018-03-15 11:12 | 91 | 2018-03-15 10:12 | 2018-03-15 11:12 | 1h | 2018-03-15 10:12 | 2018-03-15 11:12 | -59.9d | 0d | Tấn Đạt | 1h | 17.5 | 17.5 |
| 93 | 1.5.4 | **Báo cáo** |  | 1.5d | 2018-03-15 11:12 | 2018-03-16 16:12 |  | 2018-03-15 11:12 | 2018-03-16 16:12 | 1.5d | 2018-03-15 11:12 | 2018-03-16 16:12 | -59.9d | 0d |  | 12h | 157.5 | 157.5 |
| 94 | 1.5.4.1 | Báo cáo thời gian xử lý 1 lỗi, yêu cầu hoặc nhiều từ dự án ( thời gian CON nhập yêu cầu, thời gian SOF phản hồi deadline, thời gian SOF xử lý, thời gian CON xử lý hoàn tất yêu câu) |  | 2h | 2018-03-15 11:12 | 2018-03-15 14:12 | 92 | 2018-03-15 11:12 | 2018-03-15 14:12 | 2h | 2018-03-15 11:12 | 2018-03-15 14:12 | -59.9d | 0d | Tấn Đạt | 2h | 26.25 | 26.25 |
| 95 | 1.5.4.2 | Báo cáo thống kê kết quả CON kiểm tra 1 vấn đề sau khi SOF phản hồi xử lý hoàn tất |  | 2h | 2018-03-15 14:12 | 2018-03-15 16:12 | 94 | 2018-03-15 14:12 | 2018-03-15 16:12 | 2h | 2018-03-15 14:12 | 2018-03-15 16:12 | -59.9d | 0d | Tấn Đạt | 2h | 26.25 | 26.25 |
| 96 | 1.5.4.3 | Báo cáo so sánh cơ hội tuần này với tuần trước, kỳ này và kỳ trước...: số lượng, giá trị,… |  | 2h | 2018-03-15 16:12 | 2018-03-16 09:12 | 95 | 2018-03-15 16:12 | 2018-03-16 09:12 | 2h | 2018-03-15 16:12 | 2018-03-16 09:12 | -59.9d | 0d | Tấn Đạt | 2h | 26.25 | 26.25 |
| 97 | 1.5.4.4 | Báo cáo chi tiết kết quả thực hiện chiến dịch hàng tuần, hàng tháng,… theo nhân viên. |  | 2h | 2018-03-16 09:12 | 2018-03-16 11:12 | 96 | 2018-03-16 09:12 | 2018-03-16 11:12 | 2h | 2018-03-16 09:12 | 2018-03-16 11:12 | -59.9d | 0d | Tấn Đạt | 2h | 26.25 | 26.25 |
| 98 | 1.5.4.5 | Báo cáo các HelpDesk reopen, ghi nhân thông tin reopen bao nhiêu lần, nôi dung từng lần reopen |  | 2h | 2018-03-16 11:12 | 2018-03-16 14:12 | 97 | 2018-03-16 11:12 | 2018-03-16 14:12 | 2h | 2018-03-16 11:12 | 2018-03-16 14:12 | -59.9d | 0d | Tấn Đạt | 2h | 26.25 | 26.25 |
| 99 | 1.5.4.6 | Báo cáo tổng thời gian đã xử lý HelpDesk theo nhân viên |  | 2h | 2018-03-16 14:12 | 2018-03-16 16:12 | 98 | 2018-03-16 14:12 | 2018-03-16 16:12 | 2h | 2018-03-16 14:12 | 2018-03-16 16:12 | -59.9d | 0d | Tấn Đạt | 2h | 26.25 | 26.25 |
| 100 | 1.6 | Test Completed | milestone | 0d | 2018-01-24 08:00 | 2018-01-24 08:00 |  | 2018-01-24 08:00 | 2018-01-24 08:00 | 0d | 2018-01-24 08:00 | 2018-01-24 08:00 | -29d | 0d |  |  |  |  |
| 101 | 1.7 | **Fix bug** |  | 3.84d | 2018-03-13 08:30 | 2018-03-16 16:12 | 35 | 2018-03-13 08:30 | 2018-03-16 16:12 | 3.84d | 2018-03-13 08:30 | 2018-03-16 16:12 | -59.9d | 0d |  | 38.7h | 574.88 | 574.88 |
| 102 | 1.7.1 | **Yêu cầu** |  | 1.19d | 2018-03-13 08:30 | 2018-03-14 10:00 |  | 2018-03-13 08:30 | 2018-03-14 10:00 | 1.19d | 2018-03-13 08:30 | 2018-03-14 10:00 | -59.06d | 0d |  | 13.5h | 205.62 | 205.62 |
| 103 | 1.7.1.1 | Bổ sung lấy mã phân tích dự án để bổ sung chọn dự án. |  | 0.5h | 2018-03-13 08:30 | 2018-03-13 09:00 |  | 2018-03-13 08:30 | 2018-03-13 09:00 | 0.5h | 2018-03-13 08:30 | 2018-03-13 09:00 | -59.12d | 0d | Thành Luân | 0.5h | 13.12 | 13.12 |
| 104 | 1.7.1.2 | Bổ sung cho phép chọn 1 or nhiều liên hệ của khách hàng |  | 0.5h | 2018-03-13 09:00 | 2018-03-13 09:30 | 103 | 2018-03-13 09:00 | 2018-03-13 09:30 | 0.5h | 2018-03-13 09:00 | 2018-03-13 09:30 | -59.19d | 0d | Thành Luân | 0.5h | 13.12 | 13.12 |
| 105 | 1.7.1.3 | BS thiết lập chọn MPT dự án để gọi lên combobox |  | 0.5h | 2018-03-13 09:30 | 2018-03-13 10:00 | 104 | 2018-03-13 09:30 | 2018-03-13 10:00 | 0.5h | 2018-03-13 09:30 | 2018-03-13 10:00 | -59.25d | 0d | Thành Luân | 0.5h | 13.12 | 13.12 |
| 106 | 1.7.1.4 | Sửa nghiệp vụ [Yêu cầu]: bổ sung thêm các thông tin yêu cầu nếu chưa có, thêm phân loại cần thiết |  | 2h | 2018-03-13 10:00 | 2018-03-13 12:00 | 105 | 2018-03-13 10:00 | 2018-03-13 12:00 | 2h | 2018-03-13 10:00 | 2018-03-13 12:00 | -59.5d | 0d | Thành Luân | 2h | 26.25 | 26.25 |
| 107 | 1.7.1.5 | Bổ sung chức năng [Follow] |  | 4h | 2018-03-13 08:30 | 2018-03-13 13:30 |  | 2018-03-13 08:30 | 2018-03-13 13:30 | 4h | 2018-03-13 08:30 | 2018-03-13 13:30 | -57.06d | 0d | Quang Hoàng | 4h | 43.75 | 43.75 |
| 108 | 1.7.1.6 | Bổ sung xử lý Add task và bắn qua QLCV |  | 1h | 2018-03-13 13:00 | 2018-03-13 14:00 | 106 | 2018-03-13 13:00 | 2018-03-13 14:00 | 1h | 2018-03-13 13:00 | 2018-03-13 14:00 | -59.62d | 0d | Thành Luân | 1h | 17.5 | 17.5 |
| 109 | 1.7.1.7 | Nếu trạng thái là complain sẽ gửi email cho danh sách follower |  | 1h | 2018-03-13 14:00 | 2018-03-13 15:00 | 108 | 2018-03-13 14:00 | 2018-03-13 15:00 | 1h | 2018-03-13 14:00 | 2018-03-13 15:00 | -59.75d | 0d | Thành Luân | 1h | 17.5 | 17.5 |
| 110 | 1.7.1.8 | Bổ sung xuất excel màn hình [Yêu cầu] |  | 1h | 2018-03-13 15:00 | 2018-03-13 16:00 | 109 | 2018-03-13 15:00 | 2018-03-13 16:00 | 1h | 2018-03-13 15:00 | 2018-03-13 16:00 | -59.88d | 0d | Thành Luân | 1h | 17.5 | 17.5 |
| 111 | 1.7.1.9 | Gửi mail cho khách hàng khi hoàn tất yêu cầu của khách hàng kèm theo link đánh giá (theo mẫu) |  | 1h | 2018-03-13 16:00 | 2018-03-13 17:00 | 110 | 2018-03-13 16:00 | 2018-03-13 17:00 | 1h | 2018-03-13 16:00 | 2018-03-13 17:00 | -59.9d | 0d | Thành Luân | 1h | 17.5 | 17.5 |
| 112 | 1.7.1.10 | Màn hình khách hàng đánh giá |  | 2h | 2018-03-14 08:00 | 2018-03-14 10:00 | 111 | 2018-03-14 08:00 | 2018-03-14 10:00 | 2h | 2018-03-14 08:00 | 2018-03-14 10:00 | -59.9d | 0d | Thành Luân | 2h | 26.25 | 26.25 |

| ID | WBS | Task | Type | Duration | Start | Finish | Predecessors | Baseline start | Baseline finish | Baseline duration | Baseline 1 start | Baseline 1 finish | Total slack | Free slack | Resources | Work | Cost | Baseline cost |
| --- | --- | --- | --- | --- | --- | --- | --- | --- | --- | --- | --- | --- | --- | --- | --- | --- | --- | --- |
| 113 | 1.7.2 | **Đơn hàng bán** |  | 0.19d | 2018-03-14 10:00 | 2018-03-14 11:30 |  | 2018-03-14 10:00 | 2018-03-14 11:30 | 0.19d | 2018-03-14 10:00 | 2018-03-14 11:30 | -59.9d | 0d |  | 1.5h | 39.38 | 39.38 |
| 114 | 1.7.2.1 | Màn hình [Đơn hàng bán] bổ sung phân loại (Hợp đồng và đơn hàng) để quản lý |  | 0.5h | 2018-03-14 10:00 | 2018-03-14 10:30 | 112 | 2018-03-14 10:00 | 2018-03-14 10:30 | 0.5h | 2018-03-14 10:00 | 2018-03-14 10:30 | -59.9d | 0d | Thành Luân | 0.5h | 13.12 | 13.12 |
| 115 | 1.7.2.2 | Tạo bảng quản lý Hợp đồng riêng tách với [Đơn hàng bán] |  | 0.5h | 2018-03-14 10:30 | 2018-03-14 11:00 | 114 | 2018-03-14 10:30 | 2018-03-14 11:00 | 0.5h | 2018-03-14 10:30 | 2018-03-14 11:00 | -59.9d | 0d | Thành Luân | 0.5h | 13.12 | 13.12 |
| 116 | 1.7.2.3 | Đính MPT để quản lý mã số hợp đồng. |  | 0.5h | 2018-03-14 11:00 | 2018-03-14 11:30 | 115 | 2018-03-14 11:00 | 2018-03-14 11:30 | 0.5h | 2018-03-14 11:00 | 2018-03-14 11:30 | -59.9d | 0d | Thành Luân | 0.5h | 13.12 | 13.12 |
| 117 | 1.7.3 | **Others** |  | 1.84d | 2018-03-13 13:30 | 2018-03-15 11:12 |  | 2018-03-13 13:30 | 2018-03-15 11:12 | 1.84d | 2018-03-13 13:30 | 2018-03-15 11:12 | -59.02d | 0d |  | 11.7h | 172.38 | 172.38 |
| 118 | 1.7.3.1 | Bổ sung chức năng duyệt |  | 4h | 2018-03-13 13:30 | 2018-03-14 08:30 | 107 | 2018-03-13 13:30 | 2018-03-14 08:30 | 4h | 2018-03-13 13:30 | 2018-03-14 08:30 | -57.06d | 0d | Quang Hoàng | 4h | 43.75 | 43.75 |
| 119 | 1.7.3.2 | Bổ sung lấy địa chỉ email của khách hàng khi gửi mail |  | 0.5h | 2018-03-14 11:30 | 2018-03-14 12:00 | 116 | 2018-03-14 11:30 | 2018-03-14 12:00 | 0.5h | 2018-03-14 11:30 | 2018-03-14 12:00 | -59.9d | 0d | Thành Luân | 0.5h | 13.12 | 13.12 |
| 120 | 1.7.3.3 | Bổ sung hiển thị thông tin cơ hội khi tạo phiếu báo giá |  | 0.7h | 2018-03-14 13:00 | 2018-03-14 13:42 | 119 | 2018-03-14 13:00 | 2018-03-14 13:42 | 0.7h | 2018-03-14 13:00 | 2018-03-14 13:42 | -59.9d | 0d | Thành Luân | 0.7h | 14.88 | 14.88 |
| 121 | 1.7.3.4 | Sử dụng mã phân tích đối tượng CI để đưa vào CRM |  | 1h | 2018-03-14 13:42 | 2018-03-14 14:42 | 120 | 2018-03-14 13:42 | 2018-03-14 14:42 | 1h | 2018-03-14 13:42 | 2018-03-14 14:42 | -59.9d | 0d | Thành Luân | 1h | 17.5 | 17.5 |
| 122 | 1.7.3.5 | Bổ sung hiển thị cột tổng tiền lên lưới tìm kiếm |  | 1h | 2018-03-14 14:42 | 2018-03-14 15:42 | 121 | 2018-03-14 14:42 | 2018-03-14 15:42 | 1h | 2018-03-14 14:42 | 2018-03-14 15:42 | -59.9d | 0d | Thành Luân | 1h | 17.5 | 17.5 |
| 123 | 1.7.3.6 | Tích hợp xử lý tổng đài qua CRM |  | 2h | 2018-03-14 15:42 | 2018-03-15 08:42 | 122 | 2018-03-14 15:42 | 2018-03-15 08:42 | 2h | 2018-03-14 15:42 | 2018-03-15 08:42 | -59.9d | 0d | Thành Luân | 2h | 26.25 | 26.25 |
| 124 | 1.7.3.7 | Sử dụng MPT Object để PL nhóm KH ABCD, nhóm dịch vụ KH đang sử dụng |  | 1.5h | 2018-03-15 08:42 | 2018-03-15 10:12 | 123 | 2018-03-15 08:42 | 2018-03-15 10:12 | 1.5h | 2018-03-15 08:42 | 2018-03-15 10:12 | -59.9d | 0d | Thành Luân | 1.5h | 21.88 | 21.88 |
| 125 | 1.7.3.8 | Lưu điểm phản hồi của khách hàng khi KH đánh giá. |  | 1h | 2018-03-15 10:12 | 2018-03-15 11:12 | 124 | 2018-03-15 10:12 | 2018-03-15 11:12 | 1h | 2018-03-15 10:12 | 2018-03-15 11:12 | -59.9d | 0d | Thành Luân | 1h | 17.5 | 17.5 |
| 126 | 1.7.4 | **Báo cáo** |  | 1.5d | 2018-03-15 11:12 | 2018-03-16 16:12 |  | 2018-03-15 11:12 | 2018-03-16 16:12 | 1.5d | 2018-03-15 11:12 | 2018-03-16 16:12 | -59.9d | 0d |  | 12h | 157.5 | 157.5 |
| 127 | 1.7.4.1 | Báo cáo thời gian xử lý 1 lỗi, yêu cầu hoặc nhiều từ dự án ( thời gian CON nhập yêu cầu, thời gian SOF phản hồi deadline, thời gian SOF xử lý, thời gian CON xử lý hoàn tất yêu câu) |  | 2h | 2018-03-15 11:12 | 2018-03-15 14:12 | 125 | 2018-03-15 11:12 | 2018-03-15 14:12 | 2h | 2018-03-15 11:12 | 2018-03-15 14:12 | -59.9d | 0d | Thành Luân | 2h | 26.25 | 26.25 |
| 128 | 1.7.4.2 | Báo cáo thống kê kết quả CON kiểm tra 1 vấn đề sau khi SOF phản hồi xử lý hoàn tất |  | 2h | 2018-03-15 14:12 | 2018-03-15 16:12 | 127 | 2018-03-15 14:12 | 2018-03-15 16:12 | 2h | 2018-03-15 14:12 | 2018-03-15 16:12 | -59.9d | 0d | Thành Luân | 2h | 26.25 | 26.25 |
| 129 | 1.7.4.3 | Báo cáo so sánh cơ hội tuần này với tuần trước, kỳ này và kỳ trước...: số lượng, giá trị,… |  | 2h | 2018-03-15 16:12 | 2018-03-16 09:12 | 128 | 2018-03-15 16:12 | 2018-03-16 09:12 | 2h | 2018-03-15 16:12 | 2018-03-16 09:12 | -59.9d | 0d | Thành Luân | 2h | 26.25 | 26.25 |
| 130 | 1.7.4.4 | Báo cáo chi tiết kết quả thực hiện chiến dịch hàng tuần, hàng tháng,… theo nhân viên. |  | 2h | 2018-03-16 09:12 | 2018-03-16 11:12 | 129 | 2018-03-16 09:12 | 2018-03-16 11:12 | 2h | 2018-03-16 09:12 | 2018-03-16 11:12 | -59.9d | 0d | Thành Luân | 2h | 26.25 | 26.25 |
| 131 | 1.7.4.5 | Báo cáo các HelpDesk reopen, ghi nhân thông tin reopen bao nhiêu lần, nôi dung từng lần reopen |  | 2h | 2018-03-16 11:12 | 2018-03-16 14:12 | 130 | 2018-03-16 11:12 | 2018-03-16 14:12 | 2h | 2018-03-16 11:12 | 2018-03-16 14:12 | -59.9d | 0d | Thành Luân | 2h | 26.25 | 26.25 |
| 132 | 1.7.4.6 | Báo cáo tổng thời gian đã xử lý HelpDesk theo nhân viên |  | 2h | 2018-03-16 14:12 | 2018-03-16 16:12 | 131 | 2018-03-16 14:12 | 2018-03-16 16:12 | 2h | 2018-03-16 14:12 | 2018-03-16 16:12 | -59.9d | 0d | Thành Luân | 2h | 26.25 | 26.25 |
| 133 | 1.8 | Fix bug Completed | milestone | 0d | 2018-01-24 08:00 | 2018-01-24 08:00 |  | 2018-01-24 08:00 | 2018-01-24 08:00 | 0d | 2018-01-24 08:00 | 2018-01-24 08:00 | -29d | 0d |  |  |  |  |
| 134 | 1.9 | Release đợt 1 | milestone | 0d | 2018-01-24 08:00 | 2018-01-24 08:00 |  | 2018-01-24 08:00 | 2018-01-24 08:00 | 0d | 2018-01-24 08:00 | 2018-01-24 08:00 | -29d | 0d |  |  |  |  |
| 135 | 1.10 | Release đợt 2 | milestone | 0h | 2018-01-24 08:00 | 2018-01-24 08:00 |  | 2018-01-24 08:00 | 2018-01-24 08:00 | 0h | 2018-01-24 08:00 | 2018-01-24 08:00 | -29d | 0d |  |  |  |  |
| 136 | 1.11 | Release đợt 3 | milestone | 0h | 2018-01-24 08:00 | 2018-01-24 08:00 | 133 | 2018-01-24 08:00 | 2018-01-24 08:00 | 0h | 2018-01-24 08:00 | 2018-01-24 08:00 | -29d | 0d |  |  |  |  |
